id,name,parent,estimate_h,depends_on,start,end,percent_complete,milestone
D,Documents,,,,,,,no
D1,RASD,D,8,,,,100,no
D2,Design document,D,8,D1,2026-11-16,2026-11-16,90,no
D3,Alloy model and its check,D,4,D1,2026-11-16,2026-11-17,50,no
D4,Project plan,D,3,D1,2026-11-17,2026-11-17,90,no
M1,Loading ledger,,,,,,,no
M1.1,RequestGate as recording pass-through,M1,8,D2,,,100,no
M1.2,LoadingLedger and its file,M1,8,M1.1,,,100,no
M1.3,Report in diagnostics,M1,6,M1.2,,,100,no
M1.4,Screen tokens on the main screens,M1,4,M1.2,,,100,no
M1.5,Baseline run on the iPhone 12 Pro,M1,4,M1.3 M1.4,2026-11-17,2026-11-19,0,yes
M2,Parts,,,,,,,no
M2.1,Part type and LoadProgress on Resource,M2,8,M1.5,,,100,no
M2.2,Loader per part and stored part times,M2,16,M2.1,,,100,no
M2.3,Query phases,M2,8,M2.2,,,100,no
M2.4,Career as first user,M2,8,M2.3,,,100,no
M2.5,Search sources in parallel,M2,4,M1.5,,,100,no
M2.6,Integration tests with scripted transport,M2,10,M2.4,,,100,yes
M3,Section kit,,,,,,,no
M3.1,arriving modifier and SectionStatus,M3,10,M2.3,,,100,no
M3.2,RevealRenderer,M3,12,M3.1,,,100,no
M3.3,ShapeMemory,M3,4,M3.1,,,100,no
M3.4,Carriera Appelli Libretto,M3,8,M3.2 M2.6,,,100,no
M3.5,Oggi,M3,6,M3.2,,,100,no
M3.6,UI tests and hitch measurement,M3,8,M3.3 M3.4 M3.5,2026-11-19,2026-11-23,40,yes
M4,Rooms,,,,,,,no
M4.1,RelevanceOrder,M4,4,M1.5,,,100,no
M4.2,Rooms assigned per batch and stable list,M4,8,M4.1 M3.1,,,100,no
M4.3,Map colours as rooms arrive,M4,6,M4.2,,,100,no
M4.4,BoundaryClock,M4,8,M4.2,,,100,no
M4.5,Tests and first-room measurement,M4,6,M4.3 M4.4,2026-11-23,2026-11-25,50,yes
M5,Slow parts,,,,,,,no
M5.1,DeadlinePolicy and the late phase,M5,8,M2.6,,,100,no
M5.2,Host breaker in RequestGate,M5,8,M1.5,,,100,no
M5.3,Tests with a transport that never answers,M5,6,M5.1 M5.2,,,100,yes
M6,Changes,,,,,,,no
M6.1,ChangeDetector and changes on Query,M6,10,M2.6,,,100,no
M6.2,NewMarks and the mark in the section kit,M6,8,M6.1 M3.6,,,100,no
M6.3,Lecture moves into UpdateFeed and the new notification kind,M6,10,M6.1,,,100,no
M6.4,Tests with fixtures,M6,6,M6.2 M6.3,,,100,yes
M7,Prefetch,,,,,,,no
M7.1,SpeculativeBudget and its settings page,M7,10,M1.5,2026-11-25,2026-12-02,0,no
M7.2,Lanes in RequestGate,M7,8,M7.1,2026-12-02,2026-12-08,0,no
M7.3,TimetablePrefetch and its two triggers,M7,10,M7.2 M2.6,2026-12-08,2026-12-15,0,no
M7.4,Tests and hit-rate check,M7,8,M7.3,2026-12-15,2026-12-21,0,yes
M8,Offline,,,,,,,no
M8.1,OfflinePack and the processing task,M8,14,M7.4,2026-12-21,2026-12-30,0,no
M8.2,Offline page in Impostazioni,M8,8,M8.1,2026-12-30,2027-01-05,0,no
M8.3,Behaviour with no connection on every pack screen,M8,10,M8.1 M3.6,2027-01-05,2027-01-12,0,no
M8.4,Tests and storage measurement,M8,8,M8.2 M8.3,2027-01-12,2027-01-18,0,yes
A,Acceptance,,,,,,,no
A1,Use cases played on the phone,A,8,M4.5 M5.3 M6.4 M8.4,2027-01-18,2027-01-22,0,no
A2,Fixes from acceptance,A,12,A1,2027-01-22,2027-02-01,0,yes
